# 中联泰国园区DCOM平台项目

Schedule from a web Gantt chart, 2025-12-30 to 2025-12-30.
Saturdays and Sundays are off

## Schedule

| ID | WBS | Task | Duration | Start | Finish |
| --- | --- | --- | --- | --- | --- |
| 2 | 1 | DCOM系统合同签订 | 1d | 2025-12-30 | 2025-12-30 |
| 3 | 2 | 项目立项启动及启动会议 | 1d | 2025-12-30 | 2025-12-30 |
| 4 | 3 | DCOM系统硬件设备采购 | 1d | 2025-12-30 | 2025-12-30 |
| 5 | 4 | 硬件设备发货及海运报关 | 1d | 2025-12-30 | 2025-12-30 |
